# Cronograma Versão4.0

Schedule from MS Project, 2016-05-02 to 2016-06-22, costs in R$, A marks actual dates.

## Calendars

- Padrão: Mon-Fri 09:00-12:00, 13:00-18:00; Sat-Sun off.

## Resources

| Resource | Rate |
| --- | --- |
| Jonas | 80 |
| Ligia | 80 |
| Cliente |  |
| Kelly | 80 |
| GP Externo | 250 |
| Felipe Alves | 80 |

## Schedule

| ID | WBS | Task | Type | Duration | Start | Finish | Predecessors | Complete | Remaining | Baseline start | Baseline finish | Baseline duration | Total slack | Resources | Work | Actual work | Cost | Baseline cost | Actual cost |
| --- | --- | --- | --- | --- | --- | --- | --- | --- | --- | --- | --- | --- | --- | --- | --- | --- | --- | --- | --- |
| 1 | 1 | **Projeto SIES - Sistema Integrado de Estacionamentos** |  | 36.69d? | 2016-05-02 A | 2016-06-22 |  | 51% | 17.93d? | 2016-05-02 | 2016-06-22 | 36.69d? | 0d |  | 303h | 163h | 24,410 | 24,410 | 13,210 |
| 2 | 1.1 | **Prospecção** |  | 1.38d | 2016-05-02 A | 2016-05-03 A |  | 100% |  | 2016-05-02 | 2016-05-03 | 1.38d |  |  | 13h | 13h | 1,210 | 1,210 | 1,210 |
| 3 | 1.1.1 | **PTEC** |  | 1d | 2016-05-02 A | 2016-05-03 A |  | 100% |  | 2016-05-02 | 2016-05-03 | 1d |  |  | 8h | 8h | 640 | 640 | 640 |
| 4 | 1.1.1.1 | Estudar Dominio da Aplicação |  | 1h | 2016-05-02 A | 2016-05-02 A |  | 100% |  | 2016-05-02 | 2016-05-02 | 1h |  | Jonas | 1h | 1h | 80 | 80 | 80 |
| 5 | 1.1.1.2 | Reunir-se com Fornecedor de Requisitos |  | 1h | 2016-05-02 A | 2016-05-02 A | 4 | 100% |  | 2016-05-02 | 2016-05-02 | 1h |  | Jonas | 1h | 1h | 80 | 80 | 80 |
| 6 | 1.1.1.3 | Redigir PTEC |  | 5h | 2016-05-02 A | 2016-05-03 A | 5 | 100% |  | 2016-05-02 | 2016-05-03 | 5h |  | Jonas | 5h | 5h | 400 | 400 | 400 |
| 7 | 1.1.1.4 | Revisar PTEC |  | 1h | 2016-05-03 A | 2016-05-03 A | 6 | 100% |  | 2016-05-03 | 2016-05-03 | 1h |  | Ligia | 1h | 1h | 80 | 80 | 80 |
| 8 | 1.1.1.5 | Aprovar PTEC | milestone | 0h | 2016-05-03 A | 2016-05-03 A | 7 | 100% |  | 2016-05-03 | 2016-05-03 |  |  | Cliente |  |  |  |  |  |
| 9 | 1.1.2 | **Est. Prel. De Tamanho** |  | 0.38d | 2016-05-03 A | 2016-05-03 A |  | 100% |  | 2016-05-03 | 2016-05-03 | 0.38d |  |  | 3h | 3h | 410 | 410 | 410 |
| 10 | 1.1.2.1 | Redigir Termo de Abertura do Projeto |  | 1h | 2016-05-03 A | 2016-05-03 A | 8 | 100% |  | 2016-05-03 | 2016-05-03 | 1h |  | Kelly | 1h | 1h | 80 | 80 | 80 |
| 11 | 1.1.2.2 | Estimar do tamanho do Projeto |  | 1h | 2016-05-03 A | 2016-05-03 A | 10 | 100% |  | 2016-05-03 | 2016-05-03 | 1h |  | Jonas | 1h | 1h | 80 | 80 | 80 |
| 12 | 1.1.2.3 | Revisar Estimativa do Tamanho do Projeto |  | 1h | 2016-05-03 A | 2016-05-03 A | 11 | 100% |  | 2016-05-03 | 2016-05-03 | 1h |  | GP Externo | 1h | 1h | 250 | 250 | 250 |
| 13 | 1.1.3 | **Est. Prel. De Cronograma e Orçamento** |  | 0.25d | 2016-05-03 A | 2016-05-03 A |  | 100% |  | 2016-05-03 | 2016-05-03 | 0.25d |  |  | 2h | 2h | 160 | 160 | 160 |
| 14 | 1.1.3.1 | Elaborar Cronograma de Orçamento Preliminar |  | 1h | 2016-05-03 A | 2016-05-03 A | 7 | 100% |  | 2016-05-03 | 2016-05-03 | 1h |  | Felipe Alves | 1h | 1h | 80 | 80 | 80 |
| 15 | 1.1.3.2 | Revisar Cronograma de Orçamento Preliminar |  | 1h | 2016-05-03 A | 2016-05-03 A | 14 | 100% |  | 2016-05-03 | 2016-05-03 | 1h |  | Ligia | 1h | 1h | 80 | 80 | 80 |
| 16 | 1.2 | **Analise** |  | 4.5d | 2016-05-03 A | 2016-05-10 A | 2 | 100% |  | 2016-05-03 | 2016-05-10 | 4.5d |  |  | 52h | 52h | 4,160 | 4,160 | 4,160 |
| 17 | 1.2.1 | Redigir Documentos de Requisito |  | 14h | 2016-05-03 A | 2016-05-05 A |  | 100% |  | 2016-05-03 | 2016-05-05 | 14h |  | Jonas | 20h | 20h | 1,600 | 1,600 | 1,600 |
| 18 | 1.2.2 | Redigir Matriz de Rastreabilidade Bidirecional |  | 16h | 2016-05-06 A | 2016-05-10 A | 17 | 100% |  | 2016-05-06 | 2016-05-10 | 16h |  | Felipe Alves | 16h | 16h | 1,280 | 1,280 | 1,280 |
| 19 | 1.2.3 | Redigir Cronograma e Orçamento Definitivo |  | 16h | 2016-05-06 A | 2016-05-10 A | 17 | 100% |  | 2016-05-06 | 2016-05-10 | 16h |  | Ligia | 16h | 16h | 1,280 | 1,280 | 1,280 |
| 20 | 1.3 | **Implementação** |  | 30.81d? | 2016-05-10 A | 2016-06-22 | 16 | 31% | 21.16d? | 2016-05-10 | 2016-06-22 | 30.81d? | 0d |  | 238h | 98h | 19,040 | 19,040 | 7,840 |
| 21 | 1.3.1 | **Release 1** |  | 7.3d? | 2016-05-10 A | 2016-05-19 A |  | 100% |  | 2016-05-10 | 2016-05-19 | 7.3d? |  |  | 43h | 43h | 3,440 | 3,440 | 3,440 |
| 22 | 1.3.1.1 | **Implementação** |  | 6.3d | 2016-05-10 A | 2016-05-18 A |  | 100% |  | 2016-05-10 | 2016-05-18 | 6.3d |  |  | 33h | 33h | 2,640 | 2,640 | 2,640 |
| 23 | 1.3.1.1.1 | Implementar Crudes RF Manter Usuário |  | 9h | 2016-05-10 A | 2016-05-12 A |  | 100% |  | 2016-05-10 | 2016-05-12 | 9h |  | Kelly; Felipe Alves; Jonas; Ligia | 18h | 18h | 1,440 | 1,440 | 1,440 |
| 24 | 1.3.1.1.2 | Implementar Crudes RF Manter Convênio |  | 3.86h | 2016-05-13 A | 2016-05-18 A | 23 | 100% |  | 2016-05-13 | 2016-05-18 | 3.86h |  | Ligia; Jonas; Kelly; Felipe Alves | 15h | 15h | 1,200 | 1,200 | 1,200 |

| ID | WBS | Task | Duration | Start | Finish | Predecessors | Complete | Baseline start | Baseline finish | Baseline duration | Total slack | Free slack | Resources | Work | Actual work | Cost | Baseline cost | Actual cost |
| --- | --- | --- | --- | --- | --- | --- | --- | --- | --- | --- | --- | --- | --- | --- | --- | --- | --- | --- |
| 25 | 1.3.1.2 | **Testes** | 5.05d? | 2016-05-12 A | 2016-05-19 A |  | 100% | 2016-05-12 | 2016-05-19 | 5.05d? |  |  |  | 10h | 10h | 800 | 800 | 800 |
| 26 | 1.3.1.2.1 | Teste Crudes RF Manter Usuário | 0.5d? | 2016-05-12 A | 2016-05-13 A | 23 | 100% | 2016-05-12 | 2016-05-13 | 0.5d? |  |  | Felipe Alves; Kelly | 5h | 5h | 400 | 400 | 400 |
| 27 | 1.3.1.2.2 | Teste Crudes RF Manter Convênio | 0.5d? | 2016-05-18 A | 2016-05-19 A | 24 | 100% | 2016-05-18 | 2016-05-19 | 0.5d? |  |  | Jonas; Ligia | 5h | 5h | 400 | 400 | 400 |
| 28 | 1.3.2 | **Release 2** | 6.05d? | 2016-05-16 A | 2016-05-24 A |  | 100% | 2016-05-16 | 2016-05-24 | 6.05d? |  |  |  | 55h | 55h | 4,400 | 4,400 | 4,400 |
| 29 | 1.3.2.1 | **Implementação** | 4.05d | 2016-05-16 A | 2016-05-20 A |  | 100% | 2016-05-16 | 2016-05-20 | 4.05d |  |  |  | 35h | 35h | 2,800 | 2,800 | 2,800 |
| 30 | 1.3.2.1.1 | Implementar Crudes RF Manter Vagas | 3.75h | 2016-05-16 A | 2016-05-16 A | 23 | 100% | 2016-05-16 | 2016-05-16 | 3.75h |  |  | Jonas; Felipe Alves; Kelly; Ligia | 15h | 15h | 1,200 | 1,200 | 1,200 |
| 31 | 1.3.2.1.2 | Implementar Crudes RF Manter Cliente | 5h | 2016-05-18 A | 2016-05-20 A | 23, 24 | 100% | 2016-05-18 | 2016-05-20 | 5h |  |  | Kelly; Ligia; Felipe Alves; Jonas | 20h | 20h | 1,600 | 1,600 | 1,600 |
| 32 | 1.3.2.2 | **Testes** | 5.45d? | 2016-05-16 A | 2016-05-24 A |  | 100% | 2016-05-16 | 2016-05-24 | 5.45d? |  |  |  | 20h | 20h | 1,600 | 1,600 | 1,600 |
| 33 | 1.3.2.2.1 | Teste Implementar Crudes RF Manter Vagas | 1d? | 2016-05-16 A | 2016-05-18 A | 30 | 100% | 2016-05-16 | 2016-05-18 | 1d? |  |  | Felipe Alves; Kelly | 10h | 10h | 800 | 800 | 800 |
| 34 | 1.3.2.2.2 | Teste Implementar Crudes RF Manter Cliente | 1d? | 2016-05-20 A | 2016-05-24 A | 31 | 100% | 2016-05-20 | 2016-05-24 | 1d? |  |  | Jonas; Ligia | 10h | 10h | 800 | 800 | 800 |
| 35 | 1.3.3 | **Release 3** | 18.06d? | 2016-05-23 | 2016-06-16 |  |  | 2016-05-23 | 2016-06-16 | 18.06d? | 1.09d |  |  | 90h |  | 7,200 | 7,200 |  |
| 36 | 1.3.3.1 | **Implementação** | 16.81d | 2016-05-23 | 2016-06-15 |  |  | 2016-05-23 | 2016-06-15 | 16.81d | 1.09d |  |  | 75h |  | 6,000 | 6,000 |  |
| 37 | 1.3.3.1.1 | Implementar Crudes RF Manter Credito Cliente | 12.5h | 2016-05-23 | 2016-05-26 | 23, 31 |  | 2016-05-23 | 2016-05-26 | 12.5h | 1.09d | 0d | Ligia; Jonas | 25h |  | 2,000 | 2,000 |  |
| 38 | 1.3.3.1.2 | Implementar Crudes RF Gerar Relátorio Financeiro | 25h | 2016-06-07 | 2016-06-15 | 23, 24, 39 |  | 2016-06-07 | 2016-06-15 | 25h | 3.31d | 0.12d | Kelly | 25h |  | 2,000 | 2,000 |  |
| 39 | 1.3.3.1.3 | Implementar Crudes RF Controlar Aluguel de Vagas | 25h | 2016-05-30 | 2016-06-07 | 23, 31, 37 |  | 2016-05-30 | 2016-06-07 | 25h | 0d |  | Felipe Alves | 25h |  | 2,000 | 2,000 |  |
| 40 | 1.3.3.2 | **Testes** | 14.96d? | 2016-05-26 | 2016-06-16 |  |  | 2016-05-26 | 2016-06-16 | 14.96d? | 3.56d |  |  | 15h |  | 1,200 | 1,200 |  |
| 41 | 1.3.3.2.1 | Teste Implementar Crudes RF Manter Credito Cliente | 0.31d? | 2016-05-26 | 2016-05-27 | 37 |  | 2016-05-26 | 2016-05-27 | 0.31d? | 17.84d |  | Felipe Alves; Kelly | 5h |  | 400 | 400 |  |
| 42 | 1.3.3.2.2 | Teste Implementar Crudes RF Gerar Relátorio Financeiro | 0.62d? | 2016-06-15 | 2016-06-16 | 38 |  | 2016-06-15 | 2016-06-16 | 0.62d? | 3.19d |  | Jonas | 5h |  | 400 | 400 |  |
| 43 | 1.3.3.2.3 | Teste Implementar Crudes RF Controlar Aluguel de Vagas | 0.62d? | 2016-06-07 | 2016-06-08 | 39 |  | 2016-06-07 | 2016-06-08 | 0.62d? | 9.44d |  | Ligia | 5h |  | 400 | 400 |  |
| 44 | 1.3.4 | **Release 4** | 23.02d? | 2016-05-20 | 2016-06-22 |  |  | 2016-05-20 | 2016-06-22 | 23.02d? | 0d |  |  | 50h |  | 4,000 | 4,000 |  |
| 45 | 1.3.4.1 | **Implementação** | 22.2d | 2016-05-20 | 2016-06-21 |  |  | 2016-05-20 | 2016-06-21 | 22.2d | 0d |  |  | 40h |  | 3,200 | 3,200 |  |
| 46 | 1.3.4.1.1 | Implementar Crudes RF Manter Histórico do Cliente | 10h | 2016-05-20 | 2016-05-24 | 23, 31 |  | 2016-05-20 | 2016-05-24 | 10h | 19.83d | 0d | Felipe Alves; Kelly | 20h |  | 1,600 | 1,600 |  |
| 47 | 1.3.4.1.2 | Implementar Crudes RF Manter Fluxo de Caixa | 10h | 2016-06-17 | 2016-06-21 | 39, 23 |  | 2016-06-17 | 2016-06-21 | 10h | 0d |  | Ligia; Jonas | 20h |  | 1,600 | 1,600 |  |
| 48 | 1.3.4.2 | **Testes** | 20.64d? | 2016-05-24 | 2016-06-22 |  |  | 2016-05-24 | 2016-06-22 | 20.64d? | 0d |  |  | 10h |  | 800 | 800 |  |
| 49 | 1.3.4.2.1 | Teste Crudes RF Manter Histórico do Cliente | 0.31d? | 2016-05-24 | 2016-05-25 | 46 |  | 2016-05-24 | 2016-05-25 | 0.31d? | 19.95d |  | Felipe Alves; Kelly | 5h |  | 400 | 400 |  |
| 50 | 1.3.4.2.2 | Teste Crudes RF Manter Fluxo de Caixa | 0.31d? | 2016-06-21 | 2016-06-22 | 47 |  | 2016-06-21 | 2016-06-22 | 0.31d? | 0d |  | Jonas; Ligia | 5h |  | 400 | 400 |  |
